# 上邮汇平台-内部计划

Schedule from MS Project, 2017-08-21 to 2017-11-13, A marks actual dates.

## Calendars

- 标准: Mon-Fri 08:00-12:00, 13:00-17:00; Sat-Sun off. Exceptions (off unless hours are given): 2017-09-30 08:00-12:00, 13:00-17:00 (补班), 2017-10-01 to 2017-10-08 (国庆节).

## Resources

| Resource |
| --- |
| 肖发兵 |
| 郝莉莉 |
| 付强 |
| 何中伟 |
| 丁猛 |
| 程红展 |
| 穆龙飞 |

## Schedule

| ID | WBS | Task | Type | Duration | Start | Finish | Predecessors | Complete | Remaining | Total slack | Resources | Work | Actual work |
| --- | --- | --- | --- | --- | --- | --- | --- | --- | --- | --- | --- | --- | --- |
| 1 | 1 | **编码开发** |  | 52d | 2017-08-21 08:00 A | 2017-11-06 17:00 |  | 16% | 43.61d | 0d |  | 708h | 164h |
| 2 | 1.1 | **玩家客户端** |  | 52d | 2017-08-21 08:00 A | 2017-11-06 17:00 |  | 15% | 44.43d | 0d |  | 412h | 60h |
| 3 | 1.1.1 | **身份验证** |  | 1.5d | 2017-08-21 08:00 A | 2017-08-22 12:00 A |  | 100% |  |  |  | 12h | 12h |
| 4 | 1.1.1.1 | 用户注册 |  | 0.5d | 2017-08-21 08:00 A | 2017-08-21 12:00 A |  | 100% |  |  | 丁猛 | 4h | 4h |
| 5 | 1.1.1.2 | 用户登录 |  | 1d | 2017-08-21 13:00 A | 2017-08-22 12:00 A | 4 | 100% |  |  | 丁猛 | 8h | 8h |
| 6 | 1.1.2 | **首页** |  | 6d | 2017-08-22 13:00 A | 2017-08-30 12:00 | 3 | 73% | 1.64d | 0d |  | 44h | 32h |
| 7 | 1.1.2.1 | 搜索 |  | 2d | 2017-08-25 13:00 A | 2017-08-29 12:00 A | 12 | 100% |  |  | 丁猛 | 16h | 16h |
| 8 | 1.1.2.2 | 首页活动banner | milestone | 0d | 2017-08-22 13:00 A | 2017-08-22 17:00 A |  | 100% |  |  | 丁猛 |  |  |
| 9 | 1.1.2.3 | 平台客服 |  | 1d | 2017-08-23 08:00 A | 2017-08-23 17:00 A | 8 | 100% |  |  | 穆龙飞 | 8h | 8h |
| 10 | 1.1.2.4 | 快捷导航 |  | 0.5d | 2017-08-24 08:00 A | 2017-08-24 12:00 A | 9 | 100% |  |  | 丁猛 | 4h | 4h |
| 11 | 1.1.2.5 | 热推商品 |  | 0.5d | 2017-08-24 13:00 A | 2017-08-24 17:00 A | 10 | 100% |  |  | 丁猛 | 4h | 4h |
| 12 | 1.1.2.6 | 限时拍卖 |  | 0.5d | 2017-08-25 08:00 | 2017-08-25 12:00 | 11 |  |  | 3d | 穆龙飞 | 4h |  |
| 13 | 1.1.2.7 | 商品（帖子）列表 |  | 1d | 2017-08-29 13:00 | 2017-08-30 12:00 | 7 |  |  | 0d | 穆龙飞 | 8h |  |
| 14 | 1.1.3 | **私信消息** |  | 2d | 2017-08-30 13:00 A | 2017-09-01 12:00 | 6 | 50% | 1d | 42.5d |  | 16h | 8h |
| 15 | 1.1.3.1 | 私信列表 |  | 0.5d | 2017-08-30 13:00 A | 2017-08-30 17:00 A |  | 100% |  |  | 丁猛 | 4h | 4h |
| 16 | 1.1.3.2 | 私信详情 |  | 0.5d | 2017-08-31 08:00 A | 2017-08-31 12:00 A | 15 | 100% |  |  | 丁猛 | 4h | 4h |
| 17 | 1.1.3.3 | 发送/回复私信 |  | 1d | 2017-08-31 13:00 | 2017-09-01 12:00 | 16 |  |  | 42.5d | 穆龙飞 | 8h |  |
| 18 | 1.1.4 | **资讯公告** |  | 1d | 2017-09-01 13:00 A | 2017-09-04 12:00 A | 14 | 100% |  |  |  | 8h | 8h |
| 19 | 1.1.4.1 | 公告列表 |  | 0.5d | 2017-09-01 13:00 A | 2017-09-01 17:00 A |  | 100% |  |  | 丁猛 | 4h | 4h |
| 20 | 1.1.4.2 | 公告详情 |  | 0.5d | 2017-09-04 08:00 A | 2017-09-04 12:00 A | 19 | 100% |  |  | 丁猛 | 4h | 4h |
| 21 | 1.1.5 | **商城** |  | 1.5d | 2017-09-04 13:00 | 2017-09-05 17:00 | 18 |  |  | 0d |  | 12h |  |
| 22 | 1.1.5.1 | 商城活动banner |  | 0.5d | 2017-09-04 13:00 | 2017-09-04 17:00 |  |  |  | 0d | 穆龙飞 | 4h |  |
| 23 | 1.1.5.2 | 分类筛选 |  | 0.5d | 2017-09-05 08:00 | 2017-09-05 12:00 | 22 |  |  | 0d | 穆龙飞 | 4h |  |
| 24 | 1.1.5.3 | 商品列表 |  | 0.5d | 2017-09-05 13:00 | 2017-09-05 17:00 | 23 |  |  | 0d | 穆龙飞 | 4h |  |

| ID | WBS | Task | Type | Duration | Start | Finish | Predecessors | Complete | Remaining | Total slack | Resources | Work |
| --- | --- | --- | --- | --- | --- | --- | --- | --- | --- | --- | --- | --- |
| 25 | 1.1.6 | **商品详情** |  | 6d | 2017-09-06 08:00 | 2017-09-13 17:00 | 21 |  |  | 0d |  | 48h |
| 26 | 1.1.6.1 | 商品购买 |  | 1d | 2017-09-06 08:00 | 2017-09-06 17:00 |  |  |  | 0d | 丁猛 | 8h |
| 27 | 1.1.6.2 | 加入购物车 |  | 0.5d | 2017-09-07 08:00 | 2017-09-07 12:00 | 26 |  |  | 0d | 丁猛 | 4h |
| 28 | 1.1.6.3 | 拍卖出价 |  | 0.5d | 2017-09-07 13:00 | 2017-09-07 17:00 | 27 |  |  | 0d | 穆龙飞 | 4h |
| 29 | 1.1.6.4 | 求购响应 |  | 2d | 2017-09-08 08:00 | 2017-09-11 17:00 | 28 |  |  | 0d | 穆龙飞 | 16h |
| 30 | 1.1.6.5 | 店铺/用户中心 |  | 1d | 2017-09-12 08:00 | 2017-09-12 17:00 | 29 |  |  | 0d | 穆龙飞 | 8h |
| 31 | 1.1.6.6 | 店铺/用户关注 |  | 0.5d | 2017-09-13 08:00 | 2017-09-13 12:00 | 30 |  |  | 0d | 穆龙飞 | 4h |
| 32 | 1.1.6.7 | 商品收藏 |  | 0.5d | 2017-09-13 13:00 | 2017-09-13 17:00 | 31 |  |  | 0d | 穆龙飞 | 4h |
| 33 | 1.1.7 | **购物车** |  | 3.5d | 2017-09-14 08:00 | 2017-09-19 12:00 | 25 |  |  | 0d |  | 28h |
| 34 | 1.1.7.1 | 购物车管理 |  | 1d | 2017-09-14 08:00 | 2017-09-14 17:00 |  |  |  | 0d | 丁猛 | 8h |
| 35 | 1.1.7.2 | 下单结算 |  | 2d | 2017-09-15 08:00 | 2017-09-18 17:00 | 34 |  |  | 0d | 丁猛 | 16h |
| 36 | 1.1.7.3 | 推荐商品 |  | 0.5d | 2017-09-19 08:00 | 2017-09-19 12:00 | 35 |  |  | 0d | 丁猛 | 4h |
| 37 | 1.1.8 | 在线支付 |  | 5d | 2017-09-19 13:00 | 2017-09-26 12:00 | 33 |  |  | 0d | 丁猛 | 40h |
| 38 | 1.1.9 | **发布** |  | 2d | 2017-09-26 13:00 | 2017-09-28 12:00 | 37 |  |  | 0d |  | 16h |
| 39 | 1.1.9.1 | 发布出售贴 |  | 0.5d | 2017-09-26 13:00 | 2017-09-26 17:00 |  |  |  | 0d | 穆龙飞 | 4h |
| 40 | 1.1.9.2 | 发布求购帖 |  | 0.5d | 2017-09-27 08:00 | 2017-09-27 12:00 | 39 |  |  | 0d | 穆龙飞 | 4h |
| 41 | 1.1.9.3 | 发布拍卖贴 |  | 1d | 2017-09-27 13:00 | 2017-09-28 12:00 | 40 |  |  | 0d | 穆龙飞 | 8h |
| 42 | 1.1.10 | **求购抢单** |  | 1d | 2017-09-28 13:00 | 2017-09-29 12:00 | 38 |  |  | 0d |  | 8h |
| 43 | 1.1.10.1 | 求购信息推送 |  | 0.5d | 2017-09-28 13:00 | 2017-09-28 17:00 |  |  |  | 0d | 穆龙飞 | 4h |
| 44 | 1.1.10.2 | 求购抢单 |  | 0.5d | 2017-09-29 08:00 | 2017-09-29 12:00 | 43 |  |  | 0d | 穆龙飞 | 4h |
| 45 | 1.1.11 | **我的** |  | 7d | 2017-09-29 13:00 A | 2017-10-16 12:00 | 42 |  | 7d | 0d |  | 56h |
| 46 | 1.1.11.1 | 个人基本信息 |  | 2d | 2017-09-29 13:00 | 2017-10-09 12:00 |  |  |  | 0d | 穆龙飞 | 16h |
| 47 | 1.1.11.2 | 优惠劵 |  | 1d | 2017-10-09 13:00 | 2017-10-10 12:00 | 46 |  |  | 0d | 丁猛 | 8h |
| 48 | 1.1.11.3 | 关注店铺 |  | 0.5d | 2017-10-10 13:00 | 2017-10-10 17:00 | 47 |  |  | 0d | 穆龙飞 | 4h |
| 49 | 1.1.11.4 | 商品收藏 |  | 0.5d | 2017-10-11 08:00 | 2017-10-11 12:00 | 48 |  |  | 0d | 穆龙飞 | 4h |
| 50 | 1.1.11.5 | 草稿箱 |  | 1d | 2017-10-11 13:00 | 2017-10-12 12:00 | 49 |  |  | 0d | 穆龙飞 | 8h |
| 51 | 1.1.11.6 | 地址管理 |  | 1d | 2017-10-12 13:00 | 2017-10-13 12:00 | 50 |  |  | 0d | 丁猛 | 8h |
| 52 | 1.1.11.7 | 个人设置 |  | 1d | 2017-10-13 13:00 | 2017-10-16 12:00 | 51 |  |  | 0d | 丁猛 | 8h |
| 53 | 1.1.11.8 | 退出登录 | milestone | 0d | 2017-10-09 13:00 A | 2017-10-09 13:00 A | 52 | 100% |  |  | 丁猛 |  |

| ID | WBS | Task | Type | Duration | Start | Finish | Predecessors | Complete | Remaining | Total slack | Resources | Work | Actual work |
| --- | --- | --- | --- | --- | --- | --- | --- | --- | --- | --- | --- | --- | --- |
| 54 | 1.1.12 | **用户认证** |  | 2d | 2017-10-16 13:00 | 2017-10-18 12:00 | 45 |  |  | 0d |  | 16h |  |
| 55 | 1.1.12.1 | 个人认证 |  | 1d | 2017-10-16 13:00 | 2017-10-17 12:00 |  |  |  | 0d | 丁猛 | 8h |  |
| 56 | 1.1.12.2 | 商家认证 |  | 1d | 2017-10-17 13:00 | 2017-10-18 12:00 | 55 |  |  | 0d | 丁猛 | 8h |  |
| 57 | 1.1.13 | **我的钱包** |  | 4.5d | 2017-10-18 13:00 | 2017-10-24 17:00 | 54 |  |  | 0d |  | 36h |  |
| 58 | 1.1.13.1 | 充值 |  | 0.5d | 2017-10-18 13:00 | 2017-10-18 17:00 |  |  |  | 0d | 丁猛 | 4h |  |
| 59 | 1.1.13.2 | 提现 |  | 2d | 2017-10-19 08:00 | 2017-10-20 17:00 | 58 |  |  | 0d | 丁猛 | 16h |  |
| 60 | 1.1.13.3 | 支付绑定 |  | 1d | 2017-10-23 08:00 | 2017-10-23 17:00 | 59 |  |  | 0d | 丁猛 | 8h |  |
| 61 | 1.1.13.4 | 账户流水 |  | 1d | 2017-10-24 08:00 | 2017-10-24 17:00 | 60 |  |  | 0d | 丁猛 | 8h |  |
| 62 | 1.1.14 | **订单管理** |  | 4.5d | 2017-10-25 08:00 | 2017-10-31 12:00 | 57 |  |  | 0d |  | 36h |  |
| 63 | 1.1.14.1 | 订单列表 |  | 2d | 2017-10-25 08:00 | 2017-10-26 17:00 |  |  |  | 0d | 穆龙飞 | 16h |  |
| 64 | 1.1.14.2 | 订单发货 |  | 0.5d | 2017-10-27 08:00 | 2017-10-27 12:00 | 63 |  |  | 0d | 穆龙飞 | 4h |  |
| 65 | 1.1.14.3 | 确认收货 |  | 0.5d | 2017-10-27 13:00 | 2017-10-27 17:00 | 64 |  |  | 0d | 穆龙飞 | 4h |  |
| 66 | 1.1.14.4 | 订单评价 |  | 1d | 2017-10-30 08:00 | 2017-10-30 17:00 | 65 |  |  | 0d | 穆龙飞 | 8h |  |
| 67 | 1.1.14.5 | 退款申请 |  | 0.5d | 2017-10-31 08:00 | 2017-10-31 12:00 | 66 |  |  | 0d | 穆龙飞 | 4h |  |
| 68 | 1.1.15 | **服务中心** |  | 4.5d | 2017-10-31 13:00 | 2017-11-06 17:00 | 62 |  |  | 0d |  | 36h |  |
| 69 | 1.1.15.1 | 服务介绍 |  | 1d | 2017-10-31 13:00 | 2017-11-01 12:00 |  |  |  | 0d | 程红展 | 8h |  |
| 70 | 1.1.15.2 | 服务预约 |  | 3d | 2017-11-01 13:00 | 2017-11-06 12:00 | 69 |  |  | 0d | 程红展 | 24h |  |
| 71 | 1.1.15.3 | 鉴评码查询 |  | 0.5d | 2017-11-06 13:00 | 2017-11-06 17:00 | 70 |  |  | 0d | 程红展 | 4h |  |
| 72 | 1.2 | **平台管理端** |  | 50d | 2017-08-21 08:00 A | 2017-11-02 17:00 |  | 25% | 37.26d | 2d |  | 296h | 104h |
| 73 | 1.2.1 | 管理员登录 | milestone | 0d | 2017-08-21 08:00 A | 2017-08-21 08:00 A |  | 100% |  |  | 肖发兵 |  |  |
| 74 | 1.2.2 | 首页 |  | 1d | 2017-08-21 08:00 | 2017-08-21 17:00 | 73 |  |  | 51d | 程红展 | 8h |  |
| 75 | 1.2.3 | **商品管理** |  | 4d | 2017-08-22 08:00 A | 2017-08-25 17:00 A | 74 | 100% |  |  |  | 32h | 32h |
| 76 | 1.2.3.1 | 商品列表 |  | 1d | 2017-08-22 08:00 A | 2017-08-22 17:00 A |  | 100% |  |  | 肖发兵 | 8h | 8h |
| 77 | 1.2.3.2 | 商品审核 |  | 0.5d | 2017-08-23 08:00 A | 2017-08-23 12:00 A | 76 | 100% |  |  | 肖发兵 | 4h | 4h |
| 78 | 1.2.3.3 | 商品下架 |  | 0.5d | 2017-08-23 13:00 A | 2017-08-23 17:00 A | 77 | 100% |  |  | 肖发兵 | 4h | 4h |
| 79 | 1.2.3.4 | 商品分类 |  | 2d | 2017-08-24 08:00 A | 2017-08-25 17:00 A | 78 | 100% |  |  | 肖发兵 | 16h | 16h |

| ID | WBS | Task | Duration | Start | Finish | Predecessors | Complete | Total slack | Free slack | Resources | Work | Actual work |
| --- | --- | --- | --- | --- | --- | --- | --- | --- | --- | --- | --- | --- |
| 80 | 1.2.4 | **店铺管理** | 3.5d | 2017-08-28 08:00 | 2017-08-31 12:00 | 75 |  | 38d | 0d |  | 28h |  |
| 81 | 1.2.4.1 | 店铺列表 | 1d | 2017-08-28 08:00 | 2017-08-28 17:00 |  |  | 38d | 0d | 程红展 | 8h |  |
| 82 | 1.2.4.2 | 店铺查看/编辑 | 0.5d | 2017-08-29 08:00 | 2017-08-29 12:00 | 81 |  | 38d | 0d | 程红展 | 4h |  |
| 83 | 1.2.4.3 | 店铺冻结 | 0.5d | 2017-08-29 13:00 | 2017-08-29 17:00 | 82 |  | 38d | 0d | 程红展 | 4h |  |
| 84 | 1.2.4.4 | 店铺审核 | 0.5d | 2017-08-30 08:00 | 2017-08-30 12:00 | 83 |  | 38d | 0d | 程红展 | 4h |  |
| 85 | 1.2.4.5 | 增值服务管理 | 0.5d | 2017-08-30 13:00 | 2017-08-30 17:00 | 84 |  | 38d | 0d | 程红展 | 4h |  |
| 86 | 1.2.4.6 | 营销中心 | 0.5d | 2017-08-31 08:00 | 2017-08-31 12:00 | 85 |  | 38d |  | 程红展 | 4h |  |
| 87 | 1.2.5 | **交易管理** | 4.5d | 2017-08-31 13:00 | 2017-09-06 17:00 | 80 |  | 38d | 0d |  | 36h |  |
| 88 | 1.2.5.1 | 订单管理 | 2d | 2017-08-31 13:00 | 2017-09-04 12:00 |  |  | 38d | 0d | 肖发兵 | 16h |  |
| 89 | 1.2.5.2 | 仲裁管理 | 1d | 2017-09-04 13:00 | 2017-09-05 12:00 | 88 |  | 38d | 0d | 肖发兵 | 8h |  |
| 90 | 1.2.5.3 | 支付方式 | 0.5d | 2017-09-05 13:00 | 2017-09-05 17:00 | 89 |  | 38d | 0d | 程红展 | 4h |  |
| 91 | 1.2.5.4 | 交易设置 | 1d | 2017-09-06 08:00 | 2017-09-06 17:00 | 90 |  | 38d |  | 程红展 | 8h |  |
| 92 | 1.2.6 | 客服管理 | 1d | 2017-09-07 08:00 | 2017-09-07 17:00 | 87 |  | 38d |  | 程红展 | 8h |  |
| 93 | 1.2.7 | **会员管理** | 4d | 2017-09-08 08:00 A | 2017-09-13 17:00 A | 92 | 100% |  |  |  | 32h | 32h |
| 94 | 1.2.7.1 | 会员列表 | 1d | 2017-09-08 08:00 A | 2017-09-08 17:00 A |  | 100% |  |  | 程红展 | 8h | 8h |
| 95 | 1.2.7.2 | 会员拉黑 | 0.5d | 2017-09-11 08:00 A | 2017-09-11 12:00 A | 94 | 100% |  |  | 程红展 | 4h | 4h |
| 96 | 1.2.7.3 | 会员标签 | 1d | 2017-09-11 13:00 A | 2017-09-12 12:00 A | 95 | 100% |  |  | 程红展 | 8h | 8h |
| 97 | 1.2.7.4 | 积分规则 | 0.5d | 2017-09-12 13:00 A | 2017-09-12 17:00 A | 96 | 100% |  |  | 程红展 | 4h | 4h |
| 98 | 1.2.7.5 | 会员积分 | 1d | 2017-09-13 08:00 A | 2017-09-13 17:00 A | 97 | 100% |  |  | 程红展 | 8h | 8h |
| 99 | 1.2.8 | **分销模板管理** | 1.5d | 2017-09-14 08:00 A | 2017-09-15 12:00 A | 93 | 100% |  |  |  | 12h | 12h |
| 100 | 1.2.8.1 | 商品分销模板管理 | 0.5d | 2017-09-14 08:00 A | 2017-09-14 12:00 A |  | 100% |  |  | 穆龙飞 | 4h | 4h |
| 101 | 1.2.8.2 | 会员分销模板管理 | 1d | 2017-09-14 13:00 A | 2017-09-15 12:00 A | 100 | 100% |  |  | 程红展 | 8h | 8h |
| 102 | 1.2.9 | **分销管理** | 5d | 2017-09-15 13:00 | 2017-09-22 12:00 | 99 |  | 0d |  |  | 40h |  |
| 103 | 1.2.9.1 | 分销会员管理 | 1d | 2017-09-15 13:00 | 2017-09-18 12:00 |  |  | -1.5d | 0d | 肖发兵 | 8h |  |
| 104 | 1.2.9.2 | 商品分销统计 | 2d | 2017-09-18 13:00 | 2017-09-20 12:00 | 103 |  | -1.5d | 0d | 肖发兵 | 16h |  |
| 105 | 1.2.9.3 | 会员分销统计 | 2d | 2017-09-20 13:00 | 2017-09-22 12:00 | 104 |  | -1.5d | 0d | 肖发兵 | 16h |  |

| ID | WBS | Task | Type | Duration | Start | Finish | Predecessors | Complete | Remaining | Total slack | Free slack | Resources | Work | Actual work |
| --- | --- | --- | --- | --- | --- | --- | --- | --- | --- | --- | --- | --- | --- | --- |
| 106 | 1.2.10 | **服务管理** |  | 3.5d | 2017-09-22 13:00 A | 2017-09-27 17:00 A | 102 | 100% |  |  |  |  | 28h | 28h |
| 107 | 1.2.10.1 | 服务介绍 |  | 1d | 2017-09-22 13:00 A | 2017-09-25 12:00 A |  | 100% |  |  |  | 程红展 | 8h | 8h |
| 108 | 1.2.10.2 | 服务预约 |  | 1d | 2017-09-25 13:00 A | 2017-09-26 12:00 A | 107 | 100% |  |  |  | 程红展 | 8h | 8h |
| 109 | 1.2.10.3 | 鉴评结果 |  | 1d | 2017-09-26 13:00 A | 2017-09-27 12:00 A | 108 | 100% |  |  |  | 程红展 | 8h | 8h |
| 110 | 1.2.10.4 | 鉴评标签 |  | 0.5d | 2017-09-27 13:00 A | 2017-09-27 17:00 A | 109 | 100% |  |  |  | 程红展 | 4h | 4h |
| 111 | 1.2.11 | 统计报表 |  | 5d | 2017-09-28 08:00 | 2017-10-10 17:00 | 106 |  |  | -1.5d | 0d | 肖发兵 | 40h |  |
| 112 | 1.2.12 | **系统管理** |  | 4.5d | 2017-10-09 13:00 A | 2017-10-13 17:00 | 111 |  | 4.5d | 2d | 0d |  | 32h |  |
| 113 | 1.2.12.1 | 首页设置 |  | 2d | 2017-10-11 08:00 | 2017-10-12 17:00 |  |  |  | 2d | 0d | 程红展 | 16h |  |
| 114 | 1.2.12.2 | 资讯公告管理 |  | 1d | 2017-10-13 08:00 | 2017-10-13 17:00 | 113 |  |  | 2d |  | 程红展 | 8h |  |
| 115 | 1.2.12.3 | 角色权限管理 | milestone | 0d | 2017-10-09 13:00 A | 2017-10-09 13:00 A | 114 | 100% |  |  |  | 肖发兵 |  |  |
| 116 | 1.2.12.4 | 管理员管理 | milestone | 0d | 2017-10-10 13:00 A | 2017-10-10 13:00 A | 115 | 100% |  |  |  | 肖发兵 |  |  |
| 117 | 1.2.12.5 | 系统设置 |  | 1d | 2017-10-11 08:00 | 2017-10-11 17:00 | 116 |  |  | 4d |  | 肖发兵 | 8h |  |
| 118 | 1.2.13 | **财务管理** |  | 14d | 2017-10-16 08:00 | 2017-11-02 17:00 | 112 |  |  | 2d |  |  |  |  |
| 119 | 1.2.13.1 | 财务概览 |  | 2d | 2017-10-16 08:00 | 2017-10-17 17:00 |  |  |  | 2d | 0d |  |  |  |
| 120 | 1.2.13.2 | 明细流水 |  | 1d | 2017-10-18 08:00 | 2017-10-18 17:00 | 119 |  |  | 2d | 0d |  |  |  |
| 121 | 1.2.13.3 | 财务对账 |  | 2d | 2017-10-19 08:00 | 2017-10-20 17:00 | 120 |  |  | 2d | 0d |  |  |  |
| 122 | 1.2.13.4 | 店铺保证金 |  | 1d | 2017-10-23 08:00 | 2017-10-23 17:00 | 121 |  |  | 2d | 0d |  |  |  |
| 123 | 1.2.13.5 | 提现管理 |  | 3d | 2017-10-24 08:00 | 2017-10-26 17:00 | 122 |  |  | 2d | 0d |  |  |  |
| 124 | 1.2.13.6 | 账户余额 |  | 2d | 2017-10-27 08:00 | 2017-10-30 17:00 | 123 |  |  | 2d | 0d |  |  |  |
| 125 | 1.2.13.7 | 分销结算 |  | 3d | 2017-10-31 08:00 | 2017-11-02 17:00 | 124 |  |  | 2d |  |  |  |  |
| 126 | 1.3 | **商家管理端** |  | 5.5d | 2017-08-21 08:00 | 2017-08-28 12:00 |  |  |  | 46.5d |  |  |  |  |
| 127 | 1.3.1 | 登录 |  | 0.5d | 2017-08-21 08:00 | 2017-08-21 12:00 |  |  |  | 52d |  |  |  |  |
| 128 | 1.3.2 | 首页 |  | 1d | 2017-08-21 08:00 | 2017-08-21 17:00 |  |  |  | 51.5d |  |  |  |  |
| 129 | 1.3.3 | **商品管理** |  | 2d | 2017-08-21 08:00 | 2017-08-22 17:00 |  |  |  | 50d |  |  |  |  |
| 130 | 1.3.3.1 | 商品列表 |  | 0.5d | 2017-08-21 08:00 | 2017-08-21 12:00 |  |  |  | 50.5d | 0d |  |  |  |
| 131 | 1.3.3.2 | 商品发布 |  | 1d | 2017-08-21 13:00 | 2017-08-22 12:00 | 130 |  |  | 50.5d | 0d |  |  |  |
| 132 | 1.3.3.3 | 商品下架 |  | 0.5d | 2017-08-22 13:00 | 2017-08-22 17:00 | 131 |  |  | 50.5d |  |  |  |  |

| ID | WBS | Task | Duration | Start | Finish | Predecessors | Total slack | Free slack |
| --- | --- | --- | --- | --- | --- | --- | --- | --- |
| 133 | 1.3.4 | **交易管理** | 4d | 2017-08-21 08:00 | 2017-08-24 17:00 |  | 48d |  |
| 134 | 1.3.4.1 | 订单管理 | 2d | 2017-08-21 08:00 | 2017-08-22 17:00 |  | 48.5d | 0d |
| 135 | 1.3.4.2 | 退货处理 | 0.5d | 2017-08-23 08:00 | 2017-08-23 12:00 | 134 | 48.5d | 0d |
| 136 | 1.3.4.3 | 退款处理 | 0.5d | 2017-08-23 13:00 | 2017-08-23 17:00 | 135 | 48.5d | 0d |
| 137 | 1.3.4.4 | 运费模板管理 | 1d | 2017-08-24 08:00 | 2017-08-24 17:00 | 136 | 48.5d |  |
| 138 | 1.3.5 | **营销活动管理** | 5.5d | 2017-08-21 08:00 | 2017-08-28 12:00 |  | 46.5d |  |
| 139 | 1.3.5.1 | 优惠劵管理 | 1d | 2017-08-21 08:00 | 2017-08-21 17:00 |  | 47d | 0d |
| 140 | 1.3.5.2 | 满减/满送 | 0.5d | 2017-08-22 08:00 | 2017-08-22 12:00 | 139 | 47d | 0d |
| 141 | 1.3.5.3 | 限时折扣 | 1d | 2017-08-22 13:00 | 2017-08-23 12:00 | 140 | 47d | 0d |
| 142 | 1.3.5.4 | 套餐搭配 | 1d | 2017-08-23 13:00 | 2017-08-24 12:00 | 141 | 47d | 0d |
| 143 | 1.3.5.5 | 团购 | 2d | 2017-08-24 13:00 | 2017-08-28 12:00 | 142 | 47d |  |
| 144 | 1.3.6 | **店铺管理** | 4.5d | 2017-08-21 08:00 | 2017-08-25 12:00 |  | 47.5d |  |
| 145 | 1.3.6.1 | 页面设置 | 1d | 2017-08-21 08:00 | 2017-08-21 17:00 |  | 48d | 0d |
| 146 | 1.3.6.2 | 客服管理 | 0.5d | 2017-08-22 08:00 | 2017-08-22 12:00 | 145 | 48d | 0d |
| 147 | 1.3.6.3 | 增值服务管理 | 0.5d | 2017-08-22 13:00 | 2017-08-22 17:00 | 146 | 48d | 0d |
| 148 | 1.3.6.4 | 财务管理 | 2d | 2017-08-23 08:00 | 2017-08-24 17:00 | 147 | 48d | 0d |
| 149 | 1.3.6.5 | 保证金管理 | 0.5d | 2017-08-25 08:00 | 2017-08-25 12:00 | 148 | 48d |  |
| 150 | 1.3.7 | 私信管理 | 1d | 2017-08-21 08:00 | 2017-08-21 17:00 |  | 51.5d |  |
| 151 | 1.3.8 | **分销管理** | 3d | 2017-08-21 08:00 | 2017-08-23 17:00 |  | 49d |  |
| 152 | 1.3.8.1 | 下级会员列表 | 1d | 2017-08-21 08:00 | 2017-08-21 17:00 |  | 49.5d | 0d |
| 153 | 1.3.8.2 | 会员分销统计 | 2d | 2017-08-22 08:00 | 2017-08-23 17:00 | 152 | 49.5d |  |
| 154 | 1.3.9 | 统计报表 | 3d | 2017-08-21 08:00 | 2017-08-23 17:00 |  | 49.5d |  |
| 155 | 2 | 集成测试 | 5d | 2017-11-07 08:00 | 2017-11-13 17:00 | 1 | 0d |  |
