# 上邮汇平台-内部计划

Schedule from MS Project, 2017-08-21 to 2017-11-30, A marks actual dates.

## Calendars

- 标准: Mon-Fri 08:00-12:00, 13:00-17:00; Sat-Sun off. Exceptions (off unless hours are given): 2017-09-30 08:00-12:00, 13:00-17:00 (补班), 2017-10-01 to 2017-10-08 (国庆节).

## Resources

| Resource |
| --- |
| 肖发兵 |
| 郝莉莉 |
| 付强 |
| 何中伟 |
| 丁猛 |
| 程红展 |
| 穆龙飞 |

## Schedule

| ID | WBS | Task | Type | Duration | Start | Finish | Predecessors | Complete | Remaining | Total slack | Resources | Work | Actual work |
| --- | --- | --- | --- | --- | --- | --- | --- | --- | --- | --- | --- | --- | --- |
| 1 | 1 | **第一阶段** |  | 38d | 2017-08-21 08:00 A | 2017-10-17 17:00 |  | 64% | 13.65d | 32d |  | 696h | 528h |
| 2 | 1.1 | **编码开发** |  | 28.5d | 2017-08-21 08:00 A | 2017-09-28 12:00 |  | 76% | 6.88d | 41.5d |  | 696h | 528h |
| 3 | 1.1.1 | **玩家客户端** |  | 28.5d | 2017-08-21 08:00 A | 2017-09-28 12:00 |  | 94% | 1.58d | 41.5d |  | 360h | 340h |
| 4 | 1.1.1.1 | **身份验证** |  | 1.5d | 2017-08-21 08:00 A | 2017-08-22 12:00 A |  | 100% |  |  |  | 12h | 12h |
| 5 | 1.1.1.1.1 | 用户注册 |  | 0.5d | 2017-08-21 08:00 A | 2017-08-21 12:00 A |  | 100% |  |  | 丁猛 | 4h | 4h |
| 6 | 1.1.1.1.2 | 用户登录 |  | 1d | 2017-08-21 13:00 A | 2017-08-22 12:00 A | 5 | 100% |  |  | 丁猛 | 8h | 8h |
| 7 | 1.1.1.2 | **首页** |  | 5d | 2017-08-22 13:00 A | 2017-08-29 12:00 A | 4 | 100% |  |  |  | 36h | 36h |
| 8 | 1.1.1.2.1 | 搜索 |  | 2d | 2017-08-24 13:00 A | 2017-08-28 12:00 A | 12 | 100% |  |  | 丁猛 | 16h | 16h |
| 9 | 1.1.1.2.2 | 首页活动banner | milestone | 0d | 2017-08-22 13:00 A | 2017-08-22 17:00 A |  | 100% |  |  | 丁猛 |  |  |
| 10 | 1.1.1.2.3 | 快捷导航 |  | 0.5d | 2017-08-23 08:00 A | 2017-08-23 12:00 A | 9 | 100% |  |  | 丁猛 | 4h | 4h |
| 11 | 1.1.1.2.4 | 热推商品 |  | 0.5d | 2017-08-23 13:00 A | 2017-08-23 17:00 A | 10 | 100% |  |  | 丁猛 | 4h | 4h |
| 12 | 1.1.1.2.5 | 限时拍卖 |  | 0.5d | 2017-08-24 08:00 A | 2017-08-24 12:00 A | 11 | 100% |  |  | 丁猛 | 4h | 4h |
| 13 | 1.1.1.2.6 | 商品（帖子）列表 |  | 1d | 2017-08-28 13:00 A | 2017-08-29 12:00 A | 8 | 100% |  |  | 丁猛 | 8h | 8h |
| 14 | 1.1.1.3 | **私信消息** |  | 2d | 2017-08-29 13:00 A | 2017-08-31 12:00 A | 7 | 100% |  |  |  | 16h | 16h |
| 15 | 1.1.1.3.1 | 私信列表 |  | 0.5d | 2017-08-30 13:00 A | 2017-08-30 17:00 A |  | 100% |  |  | 丁猛 | 4h | 4h |
| 16 | 1.1.1.3.2 | 私信详情 |  | 0.5d | 2017-08-31 08:00 A | 2017-08-31 12:00 A | 15 | 100% |  |  | 丁猛 | 4h | 4h |
| 17 | 1.1.1.3.3 | 发送/回复私信 |  | 1d | 2017-08-29 13:00 A | 2017-08-30 12:00 A |  | 100% |  |  | 穆龙飞 | 8h | 8h |
| 18 | 1.1.1.4 | **资讯公告** |  | 1d | 2017-08-31 13:00 A | 2017-09-01 12:00 A | 16 | 100% |  |  |  | 8h | 8h |
| 19 | 1.1.1.4.1 | 公告列表 |  | 0.5d | 2017-08-31 13:00 A | 2017-08-31 17:00 A |  | 100% |  |  | 丁猛 | 4h | 4h |
| 20 | 1.1.1.4.2 | 公告详情 |  | 0.5d | 2017-09-01 08:00 A | 2017-09-01 12:00 A | 19 | 100% |  |  | 丁猛 | 4h | 4h |
| 21 | 1.1.1.5 | **商城** |  | 3d | 2017-08-30 13:00 A | 2017-09-04 12:00 A | 17 | 100% |  |  |  | 12h | 12h |
| 22 | 1.1.1.5.1 | 商城活动banner |  | 0.5d | 2017-08-30 13:00 A | 2017-08-30 17:00 A |  | 100% |  |  | 穆龙飞 | 4h | 4h |
| 23 | 1.1.1.5.2 | 分类筛选 |  | 0.5d | 2017-09-01 13:00 A | 2017-09-01 17:00 A | 20 | 100% |  |  | 丁猛 | 4h | 4h |
| 24 | 1.1.1.5.3 | 商品列表 |  | 0.5d | 2017-09-04 08:00 A | 2017-09-04 12:00 A | 23 | 100% |  |  | 丁猛 | 4h | 4h |

| ID | WBS | Task | Type | Duration | Start | Finish | Predecessors | Complete | Remaining | Total slack | Resources | Work | Actual work |
| --- | --- | --- | --- | --- | --- | --- | --- | --- | --- | --- | --- | --- | --- |
| 25 | 1.1.1.6 | **商品详情** |  | 6d | 2017-08-31 08:00 A | 2017-09-07 17:00 |  | 67% | 2d | 56d |  | 48h | 32h |
| 26 | 1.1.1.6.1 | 商品购买 |  | 1d | 2017-08-31 08:00 A | 2017-08-31 17:00 A | 22 | 100% |  |  | 穆龙飞 | 8h | 8h |
| 27 | 1.1.1.6.2 | 加入购物车 |  | 0.5d | 2017-09-01 08:00 A | 2017-09-01 12:00 A | 26 | 100% |  |  | 穆龙飞 | 4h | 4h |
| 28 | 1.1.1.6.3 | 拍卖出价 |  | 0.5d | 2017-09-01 13:00 A | 2017-09-01 17:00 A | 27 | 100% |  |  | 穆龙飞 | 4h | 4h |
| 29 | 1.1.1.6.4 | 求购响应 |  | 2d | 2017-09-04 08:00 | 2017-09-05 17:00 | 28 |  |  | 58d | 穆龙飞 | 16h |  |
| 30 | 1.1.1.6.5 | 店铺/用户中心 |  | 1d | 2017-09-06 08:00 A | 2017-09-06 17:00 A | 29 | 100% |  |  | 穆龙飞 | 8h | 8h |
| 31 | 1.1.1.6.6 | 店铺/用户关注 |  | 0.5d | 2017-09-07 08:00 A | 2017-09-07 12:00 A | 30 | 100% |  |  | 穆龙飞 | 4h | 4h |
| 32 | 1.1.1.6.7 | 商品收藏 |  | 0.5d | 2017-09-07 13:00 A | 2017-09-07 17:00 A | 31 | 100% |  |  | 穆龙飞 | 4h | 4h |
| 33 | 1.1.1.7 | **购物车** |  | 4.5d | 2017-09-04 13:00 A | 2017-09-08 17:00 A | 27 | 100% |  |  |  | 28h | 28h |
| 34 | 1.1.1.7.1 | 购物车管理 |  | 1d | 2017-09-08 08:00 A | 2017-09-08 17:00 A | 25 | 100% |  |  | 穆龙飞 | 8h | 8h |
| 35 | 1.1.1.7.2 | 下单结算 |  | 2d | 2017-09-04 13:00 A | 2017-09-06 12:00 A | 24 | 100% |  |  | 丁猛 | 16h | 16h |
| 36 | 1.1.1.7.3 | 推荐商品 |  | 0.5d | 2017-09-06 13:00 A | 2017-09-06 17:00 A | 35 | 100% |  |  | 丁猛 | 4h | 4h |
| 37 | 1.1.1.8 | 在线支付 |  | 5d | 2017-09-07 08:00 A | 2017-09-13 17:00 A | 36 | 100% |  |  | 丁猛 | 40h | 40h |
| 38 | 1.1.1.9 | **发布** |  | 2d | 2017-09-11 08:00 A | 2017-09-12 17:00 A | 32 | 100% |  |  |  | 16h | 16h |
| 39 | 1.1.1.9.1 | 发布出售贴 |  | 0.5d | 2017-09-11 08:00 A | 2017-09-11 12:00 A | 34 | 100% |  |  | 穆龙飞 | 4h | 4h |
| 40 | 1.1.1.9.2 | 发布求购帖 |  | 0.5d | 2017-09-11 13:00 A | 2017-09-11 17:00 A | 39 | 100% |  |  | 穆龙飞 | 4h | 4h |
| 41 | 1.1.1.9.3 | 发布拍卖贴 |  | 1d | 2017-09-12 08:00 A | 2017-09-12 17:00 A | 40 | 100% |  |  | 穆龙飞 | 8h | 8h |
| 42 | 1.1.1.10 | **我的** |  | 5.5d | 2017-09-13 08:00 A | 2017-09-20 12:00 A | 38 | 100% |  |  |  | 56h | 56h |
| 43 | 1.1.1.10.1 | 关注店铺 |  | 0.5d | 2017-09-13 08:00 A | 2017-09-13 12:00 A | 41 | 100% |  |  | 穆龙飞 | 4h | 4h |
| 44 | 1.1.1.10.2 | 商品收藏 |  | 0.5d | 2017-09-13 13:00 A | 2017-09-13 17:00 A | 43 | 100% |  |  | 穆龙飞 | 4h | 4h |
| 45 | 1.1.1.10.3 | 草稿箱 |  | 1d | 2017-09-14 08:00 A | 2017-09-14 17:00 A | 44 | 100% |  |  | 穆龙飞 | 8h | 8h |
| 46 | 1.1.1.10.4 | 个人基本信息 |  | 2d | 2017-09-14 08:00 A | 2017-09-15 17:00 A | 37 | 100% |  |  | 丁猛 | 16h | 16h |
| 47 | 1.1.1.10.5 | 优惠劵 |  | 1d | 2017-09-18 08:00 A | 2017-09-18 17:00 A | 46 | 100% |  |  | 丁猛 | 8h | 8h |
| 48 | 1.1.1.10.6 | 地址管理 |  | 1d | 2017-09-19 08:00 A | 2017-09-19 17:00 A | 47 | 100% |  |  | 丁猛 | 8h | 8h |
| 49 | 1.1.1.10.7 | 个人设置 |  | 1d | 2017-09-15 08:00 A | 2017-09-15 17:00 A | 45 | 100% |  |  | 穆龙飞 | 8h | 8h |
| 50 | 1.1.1.10.8 | 退出登录 | milestone | 0d | 2017-09-20 12:00 A | 2017-09-20 12:00 A | 49 | 100% |  |  | 穆龙飞 |  |  |

| ID | WBS | Task | Type | Duration | Start | Finish | Predecessors | Complete | Remaining | Total slack | Resources | Work | Actual work |
| --- | --- | --- | --- | --- | --- | --- | --- | --- | --- | --- | --- | --- | --- |
| 51 | 1.1.1.11 | **用户认证** |  | 2d | 2017-09-20 08:00 A | 2017-09-21 17:00 A | 37 | 100% |  |  |  | 16h | 16h |
| 52 | 1.1.1.11.1 | 个人认证 |  | 1d | 2017-09-20 08:00 A | 2017-09-20 17:00 A | 48 | 100% |  |  | 丁猛 | 8h | 8h |
| 53 | 1.1.1.11.2 | 商家认证 |  | 1d | 2017-09-21 08:00 A | 2017-09-21 17:00 A | 52 | 100% |  |  | 丁猛 | 8h | 8h |
| 54 | 1.1.1.12 | **我的钱包** |  | 4.5d | 2017-09-22 08:00 A | 2017-09-28 12:00 A | 51 | 100% |  |  |  | 36h | 36h |
| 55 | 1.1.1.12.1 | 充值 |  | 0.5d | 2017-09-22 08:00 A | 2017-09-22 12:00 A |  | 100% |  |  | 丁猛 | 4h | 4h |
| 56 | 1.1.1.12.2 | 提现 |  | 2d | 2017-09-22 13:00 A | 2017-09-26 12:00 A | 55 | 100% |  |  | 丁猛 | 16h | 16h |
| 57 | 1.1.1.12.3 | 支付绑定 |  | 1d | 2017-09-26 13:00 A | 2017-09-27 12:00 A | 56 | 100% |  |  | 丁猛 | 8h | 8h |
| 58 | 1.1.1.12.4 | 账户流水 |  | 1d | 2017-09-27 13:00 A | 2017-09-28 12:00 A | 57 | 100% |  |  | 丁猛 | 8h | 8h |
| 59 | 1.1.1.13 | **订单管理** |  | 4.5d | 2017-09-20 13:00 A | 2017-09-26 17:00 | 42 | 89% | 0.5d | 43d |  | 36h | 32h |
| 60 | 1.1.1.13.1 | 订单列表 |  | 2d | 2017-09-20 13:00 A | 2017-09-22 12:00 A | 49 | 100% |  |  | 穆龙飞 | 16h | 16h |
| 61 | 1.1.1.13.2 | 订单发货 |  | 0.5d | 2017-09-22 13:00 A | 2017-09-22 17:00 A | 60 | 100% |  |  | 穆龙飞 | 4h | 4h |
| 62 | 1.1.1.13.3 | 确认收货 |  | 0.5d | 2017-09-25 08:00 A | 2017-09-25 12:00 A | 61 | 100% |  |  | 穆龙飞 | 4h | 4h |
| 63 | 1.1.1.13.4 | 订单评价 |  | 1d | 2017-09-25 13:00 A | 2017-09-26 12:00 A | 62 | 100% |  |  | 穆龙飞 | 8h | 8h |
| 64 | 1.1.1.13.5 | 退款申请 |  | 0.5d | 2017-09-26 13:00 | 2017-09-26 17:00 | 63 |  |  | 43d | 穆龙飞 | 4h |  |
| 65 | 1.1.2 | **平台管理端** |  | 18.5d | 2017-08-21 08:00 A | 2017-09-14 12:00 |  | 77% | 4.32d | 51.5d |  | 240h | 184h |
| 66 | 1.1.2.1 | 管理员登录 | milestone | 0d | 2017-08-21 08:00 A | 2017-08-21 08:00 A |  | 100% |  |  | 肖发兵 |  |  |
| 67 | 1.1.2.2 | 首页 |  | 1d | 2017-08-21 08:00 A | 2017-08-21 17:00 A |  | 100% |  |  | 程红展 | 8h | 8h |
| 68 | 1.1.2.3 | **商品管理** |  | 4d | 2017-08-21 08:00 A | 2017-08-24 17:00 A | 66 | 100% |  |  |  | 32h | 32h |
| 69 | 1.1.2.3.1 | 商品列表 |  | 1d | 2017-08-21 08:00 A | 2017-08-21 17:00 A |  | 100% |  |  | 肖发兵 | 8h | 8h |
| 70 | 1.1.2.3.2 | 商品审核 |  | 0.5d | 2017-08-22 08:00 A | 2017-08-22 12:00 A | 69 | 100% |  |  | 肖发兵 | 4h | 4h |
| 71 | 1.1.2.3.3 | 商品下架 |  | 0.5d | 2017-08-22 13:00 A | 2017-08-22 17:00 A | 70 | 100% |  |  | 肖发兵 | 4h | 4h |
| 72 | 1.1.2.3.4 | 商品分类 |  | 2d | 2017-08-23 08:00 A | 2017-08-24 17:00 A | 71 | 100% |  |  | 肖发兵 | 16h | 16h |
| 73 | 1.1.2.4 | **店铺管理** |  | 3.5d | 2017-08-22 08:00 A | 2017-08-25 12:00 A | 67 | 100% |  |  |  | 28h | 28h |
| 74 | 1.1.2.4.1 | 店铺列表 |  | 1d | 2017-08-22 08:00 A | 2017-08-22 17:00 A |  | 100% |  |  | 程红展 | 8h | 8h |
| 75 | 1.1.2.4.2 | 店铺查看/编辑 |  | 0.5d | 2017-08-23 08:00 A | 2017-08-23 12:00 A | 74 | 100% |  |  | 程红展 | 4h | 4h |
| 76 | 1.1.2.4.3 | 店铺冻结 |  | 0.5d | 2017-08-23 13:00 A | 2017-08-23 17:00 A | 75 | 100% |  |  | 程红展 | 4h | 4h |
| 77 | 1.1.2.4.4 | 店铺审核 |  | 0.5d | 2017-08-24 08:00 A | 2017-08-24 12:00 A | 76 | 100% |  |  | 程红展 | 4h | 4h |
| 78 | 1.1.2.4.5 | 增值服务管理 |  | 0.5d | 2017-08-24 13:00 A | 2017-08-24 17:00 A | 77 | 100% |  |  | 程红展 | 4h | 4h |
| 79 | 1.1.2.4.6 | 营销中心 |  | 0.5d | 2017-08-25 08:00 A | 2017-08-25 12:00 A | 78 | 100% |  |  | 程红展 | 4h | 4h |

| ID | WBS | Task | Type | Duration | Start | Finish | Predecessors | Complete | Remaining | Total slack | Free slack | Resources | Work | Actual work |
| --- | --- | --- | --- | --- | --- | --- | --- | --- | --- | --- | --- | --- | --- | --- |
| 80 | 1.1.2.5 | **交易管理** |  | 4.5d | 2017-08-25 08:00 A | 2017-08-31 12:00 A | 68 | 100% |  |  |  |  | 36h | 36h |
| 81 | 1.1.2.5.1 | 订单管理 |  | 2d | 2017-08-25 08:00 A | 2017-08-28 17:00 A |  | 100% |  |  |  | 肖发兵 | 16h | 16h |
| 82 | 1.1.2.5.2 | 仲裁管理 |  | 1d | 2017-08-29 08:00 A | 2017-08-29 17:00 A | 81 | 100% |  |  |  | 肖发兵 | 8h | 8h |
| 83 | 1.1.2.5.3 | 支付方式 |  | 0.5d | 2017-08-30 08:00 A | 2017-08-30 12:00 A | 82 | 100% |  |  |  | 肖发兵 | 4h | 4h |
| 84 | 1.1.2.5.4 | 交易设置 |  | 1d | 2017-08-30 13:00 A | 2017-08-31 12:00 A | 83 | 100% |  |  |  | 肖发兵 | 8h | 8h |
| 85 | 1.1.2.6 | **会员管理** |  | 4d | 2017-08-25 13:00 A | 2017-08-31 12:00 A | 73 | 100% |  |  |  |  | 32h | 32h |
| 86 | 1.1.2.6.1 | 会员列表 |  | 1d | 2017-08-25 13:00 A | 2017-08-28 12:00 A |  | 100% |  |  |  | 程红展 | 8h | 8h |
| 87 | 1.1.2.6.2 | 会员拉黑 |  | 0.5d | 2017-08-28 13:00 A | 2017-08-28 17:00 A | 86 | 100% |  |  |  | 程红展 | 4h | 4h |
| 88 | 1.1.2.6.3 | 会员标签 |  | 1d | 2017-08-29 08:00 A | 2017-08-29 17:00 A | 87 | 100% |  |  |  | 程红展 | 8h | 8h |
| 89 | 1.1.2.6.4 | 积分规则 |  | 0.5d | 2017-08-30 08:00 A | 2017-08-30 12:00 A | 88 | 100% |  |  |  | 程红展 | 4h | 4h |
| 90 | 1.1.2.6.5 | 会员积分 |  | 1d | 2017-08-30 13:00 A | 2017-08-31 12:00 A | 89 | 100% |  |  |  | 程红展 | 8h | 8h |
| 91 | 1.1.2.7 | **系统管理** |  | 3d | 2017-08-31 12:00 A | 2017-09-05 12:00 |  | 75% | 0.75d | 2d |  |  | 32h | 24h |
| 92 | 1.1.2.7.1 | 首页设置 |  | 2d | 2017-08-31 13:00 A | 2017-09-04 12:00 A | 90 | 100% |  |  |  | 程红展 | 16h | 16h |
| 93 | 1.1.2.7.2 | 资讯公告管理 |  | 1d | 2017-09-04 13:00 A | 2017-09-05 12:00 A | 92 | 100% |  |  |  | 程红展 | 8h | 8h |
| 94 | 1.1.2.7.3 | 角色权限管理 | milestone | 0d | 2017-08-31 12:00 A | 2017-08-31 12:00 A | 84 | 100% |  |  |  | 肖发兵 |  |  |
| 95 | 1.1.2.7.4 | 管理员管理 | milestone | 0d | 2017-08-31 12:00 A | 2017-08-31 12:00 A | 94 | 100% |  |  |  | 肖发兵 |  |  |
| 96 | 1.1.2.7.5 | 系统设置 |  | 1d | 2017-08-31 13:00 | 2017-09-01 12:00 | 95 |  |  | 51.5d | 0d | 肖发兵 | 8h |  |
| 97 | 1.1.2.8 | **财务管理** |  | 9d | 2017-09-01 13:00 A | 2017-09-14 12:00 | 96 | 33% | 6d | 51.5d |  |  | 72h | 24h |
| 98 | 1.1.2.8.1 | 明细流水 |  | 1d | 2017-09-01 13:00 | 2017-09-04 12:00 |  |  |  | 51.5d | 0d | 肖发兵 | 8h |  |
| 99 | 1.1.2.8.2 | 财务对账 |  | 2d | 2017-09-04 13:00 | 2017-09-06 12:00 | 98 |  |  | 51.5d | 0d | 肖发兵 | 16h |  |
| 100 | 1.1.2.8.3 | 店铺保证金 |  | 1d | 2017-09-06 13:00 | 2017-09-07 12:00 | 99 |  |  | 51.5d | 0d | 肖发兵 | 8h |  |
| 101 | 1.1.2.8.4 | 提现管理 |  | 3d | 2017-09-07 13:00 A | 2017-09-12 12:00 A | 100 | 100% |  |  |  | 肖发兵 | 24h | 24h |
| 102 | 1.1.2.8.5 | 账户余额 |  | 2d | 2017-09-12 13:00 | 2017-09-14 12:00 | 101 |  |  | 51.5d |  | 肖发兵 | 16h |  |
| 103 | 1.1.3 | **商家管理端** |  | 12d | 2017-09-05 13:00 A | 2017-09-21 12:00 |  | 4% | 11.5d | 46.5d |  |  | 96h | 4h |
| 104 | 1.1.3.1 | 登录 |  | 0.5d | 2017-09-05 13:00 A | 2017-09-05 17:00 A | 93 | 100% |  |  |  | 程红展 | 4h | 4h |
| 105 | 1.1.3.2 | 首页 |  | 1d | 2017-09-06 08:00 | 2017-09-06 17:00 | 104 |  |  | 46.5d | 0d | 程红展 | 8h |  |

| ID | WBS | Task | Duration | Start | Finish | Predecessors | Total slack | Free slack | Constraint | Resources | Work |
| --- | --- | --- | --- | --- | --- | --- | --- | --- | --- | --- | --- |
| 106 | 1.1.3.3 | **商品管理** | 2d | 2017-09-07 08:00 | 2017-09-08 17:00 | 105 | 46.5d | 0d |  |  | 16h |
| 107 | 1.1.3.3.1 | 商品列表 | 0.5d | 2017-09-07 08:00 | 2017-09-07 12:00 |  | 46.5d | 0d |  | 程红展 | 4h |
| 108 | 1.1.3.3.2 | 商品发布 | 1d | 2017-09-07 13:00 | 2017-09-08 12:00 | 107 | 46.5d | 0d |  | 程红展 | 8h |
| 109 | 1.1.3.3.3 | 商品下架 | 0.5d | 2017-09-08 13:00 | 2017-09-08 17:00 | 108 | 46.5d |  |  | 程红展 | 4h |
| 110 | 1.1.3.4 | **交易管理** | 4d | 2017-09-11 08:00 | 2017-09-14 17:00 | 106 | 46.5d | 0d |  |  | 32h |
| 111 | 1.1.3.4.1 | 订单管理 | 2d | 2017-09-11 08:00 | 2017-09-12 17:00 |  | 46.5d | 0d |  | 程红展 | 16h |
| 112 | 1.1.3.4.2 | 退货处理 | 0.5d | 2017-09-13 08:00 | 2017-09-13 12:00 | 111 | 46.5d | 0d |  | 程红展 | 4h |
| 113 | 1.1.3.4.3 | 退款处理 | 0.5d | 2017-09-13 13:00 | 2017-09-13 17:00 | 112 | 46.5d | 0d |  | 程红展 | 4h |
| 114 | 1.1.3.4.4 | 运费模板管理 | 1d | 2017-09-14 08:00 | 2017-09-14 17:00 | 113 | 46.5d |  |  | 程红展 | 8h |
| 115 | 1.1.3.5 | **店铺管理** | 3.5d | 2017-09-15 08:00 | 2017-09-20 12:00 | 110 | 46.5d | 0d |  |  | 28h |
| 116 | 1.1.3.5.1 | 页面设置 | 1d | 2017-09-15 08:00 | 2017-09-15 17:00 |  | 46.5d | 0d |  | 程红展 | 8h |
| 117 | 1.1.3.5.2 | 财务管理 | 2d | 2017-09-18 08:00 | 2017-09-19 17:00 | 116 | 46.5d | 0d |  | 程红展 | 16h |
| 118 | 1.1.3.5.3 | 保证金管理 | 0.5d | 2017-09-20 08:00 | 2017-09-20 12:00 | 117 | 46.5d |  |  | 程红展 | 4h |
| 119 | 1.1.3.6 | 私信管理 | 1d | 2017-09-20 13:00 | 2017-09-21 12:00 | 115 | 46.5d |  |  | 程红展 | 8h |
| 120 | 1.2 | 集成测试 | 10d | 2017-09-20 08:00 | 2017-10-09 17:00 |  | 0d |  | start no earlier than 2017-09-20 08:00 |  |  |
| 121 | 1.3 | UAT测试 | 5d | 2017-10-10 08:00 | 2017-10-16 17:00 | 120 | 0d |  |  |  |  |
| 122 | 1.4 | 第一阶段上线 | 1d | 2017-10-17 08:00 | 2017-10-17 17:00 | 121 | 0d |  |  |  |  |
| 123 | 2 | **第二阶段** | 32d | 2017-10-18 08:00 | 2017-11-30 17:00 | 122 | 0d |  |  |  | 52h |
| 124 | 2.1 | **编码开发** | 21d | 2017-10-18 08:00 | 2017-11-15 17:00 |  | 0d |  |  |  | 52h |
| 125 | 2.1.1 | **玩家客户端** | 6.5d | 2017-10-18 08:00 | 2017-10-26 12:00 |  | 14.5d |  |  |  |  |
| 126 | 2.1.1.1 | **首页** | 1d | 2017-10-18 08:00 | 2017-10-18 17:00 |  | 14.5d | 0d |  |  |  |
| 127 | 2.1.1.1.1 | 平台客服 | 1d | 2017-10-18 08:00 | 2017-10-18 17:00 |  | 14.5d |  |  |  |  |
| 128 | 2.1.1.2 | **求购抢单** | 1d | 2017-10-19 08:00 | 2017-10-19 17:00 | 126 | 14.5d | 0d |  |  |  |
| 129 | 2.1.1.2.1 | 求购信息推送 | 0.5d | 2017-10-19 08:00 | 2017-10-19 12:00 |  | 14.5d | 0d |  |  |  |
| 130 | 2.1.1.2.2 | 求购抢单 | 0.5d | 2017-10-19 13:00 | 2017-10-19 17:00 | 129 | 14.5d |  |  |  |  |

| ID | WBS | Task | Duration | Start | Finish | Predecessors | Total slack | Free slack | Resources | Work |
| --- | --- | --- | --- | --- | --- | --- | --- | --- | --- | --- |
| 131 | 2.1.1.3 | **服务中心** | 4.5d | 2017-10-20 08:00 | 2017-10-26 12:00 | 128 | 14.5d |  |  |  |
| 132 | 2.1.1.3.1 | 服务介绍 | 1d | 2017-10-20 08:00 | 2017-10-20 17:00 |  | 14.5d | 0d |  |  |
| 133 | 2.1.1.3.2 | 服务预约 | 3d | 2017-10-23 08:00 | 2017-10-25 17:00 | 132 | 14.5d | 0d |  |  |
| 134 | 2.1.1.3.3 | 鉴评码查询 | 0.5d | 2017-10-26 08:00 | 2017-10-26 12:00 | 133 | 14.5d |  |  |  |
| 135 | 2.1.2 | **平台管理端** | 21d | 2017-10-18 08:00 | 2017-11-15 17:00 |  | 0d |  |  | 52h |
| 136 | 2.1.2.1 | 客服管理 | 1d | 2017-10-18 08:00 | 2017-10-18 17:00 |  | 0d |  |  |  |
| 137 | 2.1.2.2 | **分销模板管理** | 1.5d | 2017-10-19 08:00 | 2017-10-20 12:00 | 136 | 0d |  |  | 12h |
| 138 | 2.1.2.2.1 | 商品分销模板管理 | 0.5d | 2017-10-19 08:00 | 2017-10-19 12:00 |  | 0d |  | 程红展 | 4h |
| 139 | 2.1.2.2.2 | 会员分销模板管理 | 1d | 2017-10-19 13:00 | 2017-10-20 12:00 | 138 | 0d |  | 程红展 | 8h |
| 140 | 2.1.2.3 | **分销管理** | 5d | 2017-10-20 13:00 | 2017-10-27 12:00 | 137 | 0d |  |  | 40h |
| 141 | 2.1.2.3.1 | 分销会员管理 | 1d | 2017-10-20 13:00 | 2017-10-23 12:00 |  | 0d |  | 程红展 | 8h |
| 142 | 2.1.2.3.2 | 商品分销统计 | 2d | 2017-10-23 13:00 | 2017-10-25 12:00 | 141 | 0d |  | 程红展 | 16h |
| 143 | 2.1.2.3.3 | 会员分销统计 | 2d | 2017-10-25 13:00 | 2017-10-27 12:00 | 142 | 0d |  | 程红展 | 16h |
| 144 | 2.1.2.4 | **服务管理** | 3.5d | 2017-10-27 13:00 | 2017-11-01 17:00 | 140 | 0d |  |  |  |
| 145 | 2.1.2.4.1 | 服务介绍 | 1d | 2017-10-27 13:00 | 2017-10-30 12:00 |  | 0d |  |  |  |
| 146 | 2.1.2.4.2 | 服务预约 | 1d | 2017-10-30 13:00 | 2017-10-31 12:00 | 145 | 0d |  |  |  |
| 147 | 2.1.2.4.3 | 鉴评结果 | 1d | 2017-10-31 13:00 | 2017-11-01 12:00 | 146 | 0d |  |  |  |
| 148 | 2.1.2.4.4 | 鉴评标签 | 0.5d | 2017-11-01 13:00 | 2017-11-01 17:00 | 147 | 0d |  |  |  |
| 149 | 2.1.2.5 | 统计报表 | 5d | 2017-11-02 08:00 | 2017-11-08 17:00 | 144 | 0d |  |  |  |
| 150 | 2.1.2.6 | **财务管理** | 5d | 2017-11-09 08:00 | 2017-11-15 17:00 | 149 | 0d |  |  |  |
| 151 | 2.1.2.6.1 | 财务概览 | 2d | 2017-11-09 08:00 | 2017-11-10 17:00 |  | 0d |  |  |  |
| 152 | 2.1.2.6.2 | 分销结算 | 3d | 2017-11-13 08:00 | 2017-11-15 17:00 | 151 | 0d |  |  |  |
| 153 | 2.1.3 | **商家管理端** | 12.5d | 2017-10-18 08:00 | 2017-11-03 12:00 |  | 8.5d |  |  |  |
| 154 | 2.1.3.1 | **营销活动管理** | 5.5d | 2017-10-18 08:00 | 2017-10-25 12:00 |  | 8.5d | 0d |  |  |
| 155 | 2.1.3.1.1 | 优惠劵管理 | 1d | 2017-10-18 08:00 | 2017-10-18 17:00 |  | 8.5d | 0d |  |  |
| 156 | 2.1.3.1.2 | 满减/满送 | 0.5d | 2017-10-19 08:00 | 2017-10-19 12:00 | 155 | 8.5d | 0d |  |  |
| 157 | 2.1.3.1.3 | 限时折扣 | 1d | 2017-10-19 13:00 | 2017-10-20 12:00 | 156 | 8.5d | 0d |  |  |
| 158 | 2.1.3.1.4 | 套餐搭配 | 1d | 2017-10-20 13:00 | 2017-10-23 12:00 | 157 | 8.5d | 0d |  |  |
| 159 | 2.1.3.1.5 | 团购 | 2d | 2017-10-23 13:00 | 2017-10-25 12:00 | 158 | 8.5d |  |  |  |

| ID | WBS | Task | Duration | Start | Finish | Predecessors | Total slack | Free slack |
| --- | --- | --- | --- | --- | --- | --- | --- | --- |
| 160 | 2.1.3.2 | **店铺管理** | 1d | 2017-10-25 13:00 | 2017-10-26 12:00 | 154 | 8.5d | 0d |
| 161 | 2.1.3.2.1 | 增值服务管理 | 0.5d | 2017-10-25 13:00 | 2017-10-25 17:00 |  | 8.5d | 0d |
| 162 | 2.1.3.2.2 | 客服管理 | 0.5d | 2017-10-26 08:00 | 2017-10-26 12:00 | 161 | 8.5d |  |
| 163 | 2.1.3.3 | **分销管理** | 3d | 2017-10-26 13:00 | 2017-10-31 12:00 | 160 | 8.5d | 0d |
| 164 | 2.1.3.3.1 | 下级会员列表 | 1d | 2017-10-26 13:00 | 2017-10-27 12:00 |  | 8.5d | 0d |
| 165 | 2.1.3.3.2 | 会员分销统计 | 2d | 2017-10-27 13:00 | 2017-10-31 12:00 | 164 | 8.5d |  |
| 166 | 2.1.3.4 | 统计报表 | 3d | 2017-10-31 13:00 | 2017-11-03 12:00 | 163 | 8.5d |  |
| 167 | 2.2 | 集成测试 | 5d | 2017-11-16 08:00 | 2017-11-22 17:00 | 124 | 0d |  |
| 168 | 2.3 | UAT测试 | 5d | 2017-11-23 08:00 | 2017-11-29 17:00 | 167 | 0d |  |
| 169 | 2.4 | 第二阶段上线 | 1d | 2017-11-30 08:00 | 2017-11-30 17:00 | 168 | 0d |  |
